How a schedule from MS Project changed from version to version. A marks actual dates.

## Version 1 (saved 2023-07-01, file Bai04.mpp)

Note of the change: tuan04

| ID | WBS | Task | Duration | Start | Finish | Predecessors | Total float |
| --- | --- | --- | --- | --- | --- | --- | --- |
| 1 | 1 | **Planning** | 88d | 2009-10-12 | 2010-02-10 |  | 0d |
| 2 |  | Creating architectural plans | 12w | 2009-10-12 | 2010-01-01 |  | 0d |
| 3 |  | Submit pnlas for approval | 1mo | 2010-01-04 | 2010-01-29 | 2 | 0d |
| 4 |  | Order materials | 8d | 2010-02-01 | 2010-02-10 | 3 | 0d |
| 5 |  | Planning Completed | 0d | 2010-02-10 | 2010-02-10 | 2, 3, 4 | 0d |
| 6 | 2 | **Site Works** | 27d | 2010-02-11 | 2010-03-19 |  | 0d |
| 7 |  | Erect fencing | 3d | 2010-02-11 | 2010-02-15 | 5 | 0d |
| 8 |  | Erect site building | 4d | 2010-02-16 | 2010-02-19 | 7 | 0d |
| 9 |  | Clear and level site | 3w | 2010-02-22 | 2010-03-12 | 8 | 0d |
| 10 |  | Prepare drainage infrastructure | 1w | 2010-03-15 | 2010-03-19 | 9 | 0d |
| 11 |  | Preparecabling infrastructure | 1w | 2010-03-15 | 2010-03-19 | 9 | 0d |
| 12 |  | Site Works Completed | 0d | 2010-03-19 | 2010-03-19 | 7, 8, 9, 10, 11 | 0d |
| 13 | 3 | **Building Construction** | 190d? | 2010-03-22 | 2010-12-10 |  | 0d |
| 14 |  | Pour foundations | 4d | 2010-03-22 | 2010-03-25 | 12 | 0d |
| 15 |  | Erect steelwork | 6mo | 2010-03-26 | 2010-09-09 | 14 | 0d |
| 16 |  | Erect wall | 2mo | 2010-09-10 | 2010-11-04 | 15 | 0d |
| 17 |  | Install roofing superstructure | 2w | 2010-11-05 | 2010-11-18 | 16 | 0d |
| 18 |  | Install roofing retracting mechanism | 1w | 2010-11-19 | 2010-11-25 | 17 | 0d |
| 19 |  | Erec seating tiers | 3w | 2010-11-19 | 2010-12-09 | 18SS | 0d |
| 20 |  | Building Construction Completed | 1d? | 2010-12-10 | 2010-12-10 | 14, 15, 16, 17, 18, 19 | 0d |
| 21 | 4 | **Fit Out** | 36d? | 2010-12-13 | 2011-01-31 |  | 0d |
| 22 |  | Fit all windows and doors | 2w | 2010-12-13 | 2010-12-24 | 20 | 25d |
| 23 |  | Install electrical cabling | 1w | 2010-12-13 | 2010-12-17 | 20 | 20d |
| 24 |  | Install electrical fittings and fixtures | 2w | 2010-12-20 | 2010-12-31 | 23 | 20d |
| 25 |  | Install all plumbing | 2w | 2010-12-13 | 2010-12-24 | 20 | 20d |
| 26 |  | Install plumbing fixtures and fittings | 1w | 2010-12-27 | 2010-12-31 | 25 | 20d |
| 27 |  | Lay astro turf | 1w | 2010-12-13 | 2010-12-17 | 20 | 30d |
| 28 |  | Erect handrails and fencing | 2w | 2010-12-13 | 2010-12-24 | 20 | 0d |
| 29 |  | Paint rooms,fixtures,fittings,etc | 1mo | 2010-12-27 | 2011-01-21 | 28 | 0d |
| 30 |  | Install PA system | 2d | 2010-12-20 | 2010-12-21 | 23 | 23d |
| 31 |  | Install video imaging equipment | 3d | 2010-12-20 | 2010-12-22 | 23 | 22d |
| 32 |  | Fit out control room | 1w | 2011-01-24 | 2011-01-28 | 29, 30, 31 | 0d |
| 33 |  | Fit out Completed | 1d? | 2011-01-31 | 2011-01-31 | 22, 23, 24, 25, 26, 27, 28, 29, 30, 31, 32 | 0d |
| 34 | 5 | **Commissioning** | 14d | 2011-02-01 | 2011-02-18 |  | 0d |
| 35 |  | Test roof mechanism | 1w | 2011-02-01 | 2011-02-07 | 33 | 0d |
| 36 |  | Test PA system | 2d | 2011-02-01 | 2011-02-02 | 33 | 3d |
| 37 |  | Test video imaging equipment | 2d | 2011-02-01 | 2011-02-02 | 33 | 3d |
| 38 |  | Test control room equipment | 1w | 2011-02-08 | 2011-02-14 | 35, 36, 37 | 0d |
| 39 |  | Obtain official occupancy | 1d | 2011-02-15 | 2011-02-15 | 38 | 0d |
| 40 |  | Obtain safety certification | 2d | 2011-02-16 | 2011-02-17 | 39 | 0d |
| 41 |  | Official opening | 1d | 2011-02-18 | 2011-02-18 | 40 | 0d |
| 42 |  | Commissioning Completed | 0d | 2011-02-18 | 2011-02-18 | 35, 36, 37, 38, 39, 40, 41 | 0d |

## Version 2 (saved 2023-07-01, file bai4_tuan4 (1).mpp)

Note of the change: tuan04

Last finish 2011-02-18 → 2024-10-16 (+4989d). Complete tasks 0 → 2.

Changed:

| ID | Task | Start | Finish | Duration | Complete | Total float | Other |
| --- | --- | --- | --- | --- | --- | --- | --- |
| 1 | **Planning** | 2009-10-12 → 2023-11-01 A (+5133d) | 2010-02-10 → 2023-12-29 (+5070d) | 88d → 43d | 0% → 17% | 0d → 5d |  |
| 2 | Creating architectural plans | 2009-10-12 → 2023-11-01 A (+5133d) | 2010-01-01 → 2023-11-21 (+5072d) | 12w → 3w | 0% → 50% | 0d → 5d | resources Architect; Building Clerk [25%]; Draftsperson [200%] → Architect; Draftsperson [200%]; Building Clerk [25%] |
| 3 | Submit pnlas for approval | 2010-01-04 → 2023-11-22 (+5070d) | 2010-01-29 → 2023-12-19 (+5072d) |  |  | 0d → 5d |  |
| 4 | Order materials | 2010-02-01 → 2023-12-20 (+5070d) | 2010-02-10 → 2023-12-29 (+5070d) |  |  | 0d → 5d | resources Building Clerk; Draftsperson → Draftsperson; Building Clerk |
| 5 | Planning Completed | 2010-02-10 → 2023-12-29 (+5070d) | 2010-02-10 → 2023-12-29 (+5070d) |  |  | 0d → 5d |  |
| 6 | **Site Works** | 2010-02-11 → 2024-01-01 (+5072d) | 2010-03-19 → 2024-02-06 (+5072d) |  |  | 0d → 5d |  |
| 7 | Erect fencing | 2010-02-11 → 2024-01-01 (+5072d) | 2010-02-15 → 2024-01-03 (+5070d) |  |  | 0d → 5d |  |
| 8 | Erect site building | 2010-02-16 → 2024-01-04 (+5070d) | 2010-02-19 → 2024-01-09 (+5072d) |  |  | 0d → 5d | resources Carpenter [400%]; Labourer; Supervisor → Carpenter [400%]; Supervisor; Labourer |
| 9 | Clear and level site | 2010-02-22 → 2024-01-10 (+5070d) | 2010-03-12 → 2024-01-30 (+5072d) |  |  | 0d → 5d | resources Driver [200%]; Grader [200%]; Supervisor → Supervisor; Grader [200%]; Driver [200%] |
| 10 | Prepare drainage infrastructure | 2010-03-15 → 2024-01-31 (+5070d) | 2010-03-19 → 2024-02-06 (+5072d) |  |  | 0d → 5d |  |
| 11 | Preparecabling infrastructure | 2010-03-15 → 2024-01-31 (+5070d) | 2010-03-19 → 2024-02-06 (+5072d) |  |  | 0d → 5d | resources Supervisor [50%]; Eletrician [300%] → Supervisor [50%]; Electrician [300%] |
| 12 | Site Works Completed | 2010-03-19 → 2024-02-06 (+5072d) | 2010-03-19 → 2024-02-06 (+5072d) |  |  | 0d → 5d |  |
| 13 | **Building Construction** | 2010-03-22 → 2024-02-07 (+5070d) | 2010-12-10 → 2024-08-06 (+4988d) | 190d? → 130d? |  | 0d → 5d |  |
| 14 | Pour foundations | 2010-03-22 → 2024-02-07 (+5070d) | 2010-03-25 → 2024-02-12 (+5072d) |  |  | 0d → 5d |  |
| 15 | Erect steelwork | 2010-03-26 → 2024-02-13 (+5072d) | 2010-09-09 → 2024-05-06 (+4988d) | 6mo → 3mo |  | 0d → 5d | resources Driver [200%]; Supervisor [50%]; Boilermaker [600%]; High Jib Crane; Labourer [600%]; Rigger [600%]; Utiliy; Welder [500%] → Supervisor [50%]; Rigger [600%]; Boilermaker [600%]; Welder [500%]; Labourer [600%]; Driver [200%]; High Jib Crane; Utility |
| 16 | Erect wall | 2010-09-10 → 2024-05-07 (+4988d) | 2010-11-04 → 2024-07-01 (+4988d) |  |  | 0d → 5d | resources Supervisor [50%]; Carpenter [700%]; Labourer [400%]; Driver; Grader; Air Compressor; Eletrician [75%]; Plumber [25%] → Supervisor [50%]; Carpenter [700%]; Labourer [400%]; Driver; Grader; Air Compressor; Electrician [75%]; Plumber [25%] |
| 17 | Install roofing superstructure | 2010-11-05 → 2024-07-02 (+4988d) | 2010-11-18 → 2024-07-15 (+4988d) |  |  | 0d → 5d | resources none → Supervisor [50%]; Rigger [500%]; Boilermaker [500%]; Welder [300%]; Labourer [500%]; Driver [200%]; High Jib Crane; Utility; Air Compressor; Plumber [50%] |
| 18 | Install roofing retracting mechanism | 2010-11-19 → 2024-07-16 (+4988d) | 2010-11-25 → 2024-07-22 (+4988d) |  |  | 0d → 5d | resources none → Supervisor [50%]; Welder; Boilermaker [200%]; Driver; Rigger [200%]; Electrician [200%]; High Jib Crane |
| 19 | Erec seating tiers | 2010-11-19 → 2024-07-16 (+4988d) | 2010-12-09 → 2024-08-05 (+4988d) |  |  | 0d → 5d | resources none → Supervisor [50%]; Carpenter [800%]; Welder [200%]; Boilermaker [200%]; Labourer [500%]; Driver; Utility; Air Compressor |
| 20 | Building Construction Completed | 2010-12-10 → 2024-08-06 (+4988d) | 2010-12-10 → 2024-08-06 (+4988d) |  |  | 0d → 5d |  |
| 21 | **Fit Out** | 2010-12-13 → 2024-08-07 A (+4986d) | 2011-01-31 → 2024-09-25 (+4986d) |  | 0% → 12% | 0d → 5d |  |
| 22 | Fit all windows and doors | 2010-12-13 → 2024-08-07 (+4986d) | 2010-12-24 → 2024-08-20 (+4988d) |  |  | 25d → 30d | resources none → Carpenter [500%]; Labourer [200%] |
| 23 | Install electrical cabling | 2010-12-13 → 2024-08-07 (+4986d) | 2010-12-17 → 2024-08-13 (+4988d) |  |  | 20d → 27d | resources none → Electrician [300%]; Labourer [200%] |
| 24 | Install electrical fittings and fixtures | 2010-12-20 → 2024-08-14 A (+4986d) | 2010-12-31 → 2024-08-27 A (+4988d) |  | 0% → 100% | 20d → none | resources none → Electrician [300%] |
| 25 | Install all plumbing | 2010-12-13 → 2024-08-07 (+4986d) | 2010-12-24 → 2024-08-20 (+4988d) |  |  | 20d → 25d | resources none → Plumber [200%]; Labourer [200%] |
| 26 | Install plumbing fixtures and fittings | 2010-12-27 → 2024-08-21 (+4986d) | 2010-12-31 → 2024-08-27 (+4988d) |  |  | 20d → 25d | resources none → Plumber [200%] |
| 27 | Lay astro turf | 2010-12-13 → 2024-08-07 (+4986d) | 2010-12-17 → 2024-08-13 (+4988d) |  |  | 30d → 35d | resources none → Pure Grass Turf |
| 28 | Erect handrails and fencing | 2010-12-13 → 2024-08-07 (+4986d) | 2010-12-24 → 2024-08-20 (+4988d) |  |  | 0d → 5d | resources none → Welder [400%]; Boilermaker [200%] |
| 29 | Paint rooms,fixtures,fittings,etc | 2010-12-27 → 2024-08-21 (+4986d) | 2011-01-21 → 2024-09-17 (+4988d) |  |  | 0d → 5d | resources none → Painter [500%] |
| 30 | Install PA system | 2010-12-20 → 2024-08-14 (+4986d) | 2010-12-21 → 2024-08-15 (+4986d) |  |  | 23d → 28d | resources none → Listen Ear Audio |
| 31 | Install video imaging equipment | 2010-12-20 → 2024-08-14 (+4986d) | 2010-12-22 → 2024-08-16 (+4986d) |  |  | 22d → 27d | resources none → In Focus Video |
| 32 | Fit out control room | 2011-01-24 → 2024-09-18 (+4986d) | 2011-01-28 → 2024-09-24 (+4988d) |  |  | 0d → 5d | resources none → Electrician [200%]; Listen Ear Audio; In Focus Video |
| 33 | Fit out Completed | 2011-01-31 → 2024-09-25 (+4986d) | 2011-01-31 → 2024-09-25 (+4986d) |  |  | 0d → 5d |  |
| 34 | **Commissioning** | 2011-02-01 → 2024-09-26 A (+4986d) | 2011-02-18 → 2024-10-16 (+4989d) | 14d → 15d | 0% → 5% |  |  |
| 35 | Test roof mechanism | 2011-02-01 → 2024-09-26 (+4986d) | 2011-02-07 → 2024-10-02 (+4986d) |  |  | 0d → 5d | resources none → Supervisor; Electrician [200%]; Rigger |
| 36 | Test PA system | 2011-02-01 → 2024-09-26 (+4986d) | 2011-02-02 → 2024-09-27 (+4986d) |  |  | 3d → 8d | resources none → Listen Ear Audio |
| 37 | Test video imaging equipment | 2011-02-01 → 2024-09-26 (+4986d) | 2011-02-02 → 2024-09-27 (+4986d) |  |  | 3d → 8d | resources none → In Focus Video |
| 38 | Test control room equipment | 2011-02-08 → 2024-10-03 (+4986d) | 2011-02-14 → 2024-10-09 (+4986d) |  |  | 0d → 5d | resources none → Supervisor; Listen Ear Audio [20%]; In Focus Video [20%]; Architect; Electrician [200%] |
| 39 | Obtain official occupancy | 2011-02-15 → 2024-10-10 A (+4986d) | 2011-02-15 → 2024-10-10 A (+4986d) |  | 0% → 100% | 0d → none | resources none → Architect; Building Clerk; Supervisor |
| 40 | Obtain safety certification | 2011-02-16 → 2024-10-11 (+4986d) | 2011-02-17 → 2024-10-14 (+4988d) |  |  |  | resources none → Supervisor |
| 41 | Official opening | 2011-02-18 → 2024-10-15 (+4988d) | 2011-02-18 → 2024-10-16 (+4989d) | 1d → 2d |  |  | resources none → Supervisor; Welder |
| 42 | Commissioning Completed | 2011-02-18 → 2024-10-16 (+4989d) | 2011-02-18 → 2024-10-16 (+4989d) |  |  |  |  |
